# 资产云上线计划

Schedule from a web Gantt chart, 2025-05-20 to 2025-06-24.
Every day is a working day

## Schedule

| ID | WBS | Task | Duration | Start | Finish |
| --- | --- | --- | --- | --- | --- |
| 2 | 1 | **项目准备** | 1d | 2025-05-20 | 2025-05-20 |
| 3 | 1.1 | 项目团队组建 | 1d | 2025-05-20 | 2025-05-20 |
| 4 | 2 | **开发需求沟通** | 1d | 2025-05-20 | 2025-05-20 |
| 5 | 2.1 | **人力云-资产云联动需求** | 1d | 2025-05-20 | 2025-05-20 |
| 6 | 2.1.1 | 现有资产管理系统和人力相关流程梳理 | 1d | 2025-05-20 | 2025-05-20 |
| 7 | 2.1.2 | 资产相关人员信息变动范围确认 | 1d | 2025-05-20 | 2025-05-20 |
| 8 | 2.1.3 | 流程转功能需求确认 | 1d | 2025-05-20 | 2025-05-20 |
| 9 | 2.2 | **资产云全员自动授予/撤销权限需求** | 1d | 2025-05-20 | 2025-05-20 |
| 10 | 2.2.1 | 授权范围和边界确认 | 1d | 2025-05-20 | 2025-05-20 |
| 11 | 2.3 | 开发需求交接和制定开发计划 | 1d | 2025-05-20 | 2025-05-20 |
| 12 | 3 | **资产数据标准确定** | 1d | 2025-05-20 | 2025-05-20 |
| 13 | 3.1 | **静态数据标准** | 1d | 2025-05-20 | 2025-05-20 |
| 14 | 3.1.1 | 资产实物分类标准 | 1d | 2025-05-20 | 2025-05-20 |
| 15 | 3.1.2 | 物料分类标准 | 1d | 2025-05-20 | 2025-05-20 |
| 16 | 3.1.3 | 周转材分类标准 | 1d | 2025-05-20 | 2025-05-20 |
| 17 | 3.1.4 | 库存和仓库标准 | 1d | 2025-05-20 | 2025-05-20 |
| 18 | 3.2 | **资产梳理与导入表单整理** | 1d | 2025-05-20 | 2025-05-20 |
| 19 | 3.2.1 | 办公资产梳理 | 1d | 2025-05-20 | 2025-05-20 |
| 20 | 3.2.2 | 数据中心资产梳理 | 1d | 2025-05-20 | 2025-05-20 |
| 21 | 4 | **标准功能试点上线** | 28d | 2025-05-20 | 2025-06-16 |
| 22 | 4.1 | 环境准备 | 1d | 2025-05-20 | 2025-05-20 |
| 23 | 4.2 | 正式环境静态数据导入 | 3d | 2025-06-10 | 2025-06-12 |
| 24 | 4.3 | 资产数据导入 | 3d | 2025-06-11 | 2025-06-13 |
| 25 | 4.4 | 功能验证 | 1d | 2025-06-13 | 2025-06-13 |
| 26 | 4.5 | 标准功能全面推广 | 1d | 2025-06-16 | 2025-06-16 |

| ID | WBS | Task | Duration | Start | Finish |
| --- | --- | --- | --- | --- | --- |
| 27 | 5 | **数据验证** | 5d | 2025-06-16 | 2025-06-20 |
| 28 | 5.1 | 全员资产盘点 | 5d | 2025-06-16 | 2025-06-20 |
| 29 | 6 | **项目总结归档** | 2d | 2025-06-23 | 2025-06-24 |
| 30 | 6.1 | 整理实施文档 | 1d | 2025-06-23 | 2025-06-23 |
| 31 | 6.2 | 资产云使用指导 | 1d | 2025-06-24 | 2025-06-24 |
